# NMDC Kirandul-Stacker & reclaimer

Schedule from Primavera P6, 2023-02-20 to 2023-10-21, data date 2023-02-19.

## Calendars

- SAMPLE PROJ CAL: Mon-Sat 08:00-13:00, 14:00-18:00; Sun off.

## Schedule

| ID | WBS | Activity | Type | Duration | Start | Finish | Predecessors | Total float | Free float |
| --- | --- | --- | --- | --- | --- | --- | --- | --- | --- |
| A1000 |  | SOP | milestone | 0d | 2023-02-20 | 2023-02-20 |  | 0d |  |
| A1010 |  | EOP | milestone | 0d | 2023-10-21 | 2023-10-21 | A4880 FF | 0d |  |
|  | 3 | **ERECTION** |  |  | 2023-02-20 | 2023-10-21 |  |  |  |
|  | 1 | **Inspection of Spare Items of BWSR #9** |  |  | 2023-07-15 | 2023-07-26 |  |  |  |
| A4500 |  | Inspection by OEM |  | 10d | 2023-07-15 | 2023-07-26 | A1000 SS+125d | 0d |  |
|  | 2 | **Mechanical Installation** |  |  | 2023-02-20 | 2023-10-11 |  |  |  |
| A4530 |  | E-Ganrty assembly & Erection along with E Gantry Access |  | 20d | 2023-02-20 | 2023-03-14 |  | 157.56d | 0d |
| A4510 |  | Travelling Bogie Assembly & Installation |  | 10d | 2023-07-27 | 2023-08-07 | A4500 | 0d |  |
| A4520 |  | Base Frame assembly & erection along with access |  | 15d | 2023-07-27 | 2023-08-12 | A4510 SS | 0d |  |
| A4550 |  | Slew Deck Assembly Erection and torquing along with Access |  | 20d | 2023-08-02 | 2023-08-24 | A4540 SS-10d | 5d | 0d |
| A4540 |  | Slew Ring Erection Alignment & Torquing |  | 6d | 2023-08-14 | 2023-08-19 | A4520 | 5d | 0d |
| A4570 |  | Temp Str For Boom Installation (including PCC) |  | 15d | 2023-08-14 | 2023-08-30 | A4520 | 0d |  |
| A4560 |  | Assembly & Erection of Slew Deck and Base Frame Chute |  | 4d | 2023-08-25 | 2023-08-29 | A4550 SS+20d, A4520 | 5d |  |
| A4590 |  | Mast Assembly & Erection Along With Access |  | 10d | 2023-08-25 | 2023-09-05 | A4580 SS-5d | 0d |  |
| A4690 |  | Hydraulic Works(Power Pack, Cylinder & Drive) for complete readiness with pipe laying, NDT & Teasting |  | 20d | 2023-08-25 | 2023-09-16 | A4550 | 12d | 0d |
| A4580 |  | Inner boom assembly & Erection along with pulley and tech-structures |  | 7d | 2023-08-31 | 2023-09-07 | A4560 SS, A4570 | 0d |  |
| A4600 |  | Boom Assembly Erection along with all access and Takeup |  | 5d | 2023-09-06 | 2023-09-11 | A4590 SS+10d | 0d |  |
| A4700 |  | Lubrication system(Panel & Piping) Installation |  | 20d | 2023-09-06 | 2023-09-28 | A4690 SS+10d | 12d |  |
| A4610 |  | Boom link assembly and erection |  | 4.44d | 2023-09-15 | 2023-09-20 | A4600 SS+8d | 1.56d | 0d |
| A4620 |  | Tail boom with access assembly and Erection |  | 5d | 2023-09-15 | 2023-09-20 | A4600 SS+8d, A4610 SS | 1.56d | 0d |
| A4730 |  | Cylinder locking |  | 2d | 2023-09-18 | 2023-09-19 | A4690 | 20d |  |
| A4740 |  | Other misc items |  | 7d | 2023-09-18 | 2023-09-25 | A4690 | 15d |  |
| A4660 |  | Operator Cabin with support structure Assembly & Erection |  | 7d | 2023-09-20 | 2023-09-27 | A4600 FS+7d | 8d | 0d |
| A4630 |  | Tail link assembly and erection |  | 2d | 2023-09-25 | 2023-09-26 | A4620 FS+3d | 1.56d | 0d |
| A4640 |  | Bucket Wheel Assembly and Erection along with Plummer Block Installation |  | 4d | 2023-09-27 | 2023-09-30 | A4630 SS+2d | 1.56d | 0d |
| A4650 |  | Bucket wheel chute assembly and erection |  | 2d | 2023-09-27 | 2023-09-28 | A4640 SS | 1.56d | 0d |
| A4670 |  | Boom tech structure installation and allignment |  | 5d | 2023-09-27 | 2023-10-02 | A4600 FS+10d, A4650 SS | 1.56d | 0d |
| A4680 |  | Boom conveyor belt installation and Joining |  | 3d | 2023-10-03 | 2023-10-05 | A4670 | 1.56d | 0d |
| A4710 |  | Belt scale installation |  | 3d | 2023-10-03 | 2023-10-05 | A4670, A4680 SS | 1.56d | 0d |
| A4720 |  | Machine balancing and counter weight erection |  | 4.44d | 2023-10-06 | 2023-10-11 | A4710 | 1.56d |  |

| ID | WBS | Activity | Duration | Start | Finish | Predecessors | Total float | Free float | Expected finish |
| --- | --- | --- | --- | --- | --- | --- | --- | --- | --- |
|  | 3 | **E&I Installation** |  | 2023-03-15 | 2023-10-14 |  |  |  |  |
| A4750 |  | E-House Installation | 3d | 2023-03-15 | 2023-03-17 | A4530 | 157.56d | 0d |  |
| A4760 |  | Transformer and VCB panel installation | 2d | 2023-03-18 | 2023-03-20 | A4750 | 157.56d | 0d |  |
| A4770 |  | CRD base and wheel assembly | 4.44d | 2023-03-21 | 2023-03-25 | A4760 | 157.56d | 145.56d |  |
| A4780 |  | Field instrument erection | 15d | 2023-09-12 | 2023-09-28 | A4600 SS+5d, A4770 | 12d |  |  |
| A4800 |  | Cable tray installation | 15d | 2023-09-12 | 2023-09-28 | A4600 | 0d |  |  |
| A4810 |  | Cabling works | 12d | 2023-09-23 | 2023-10-06 | A4800 SS+10d | 0d |  |  |
| A4790 |  | Operator cabin equipments erection | 5d | 2023-09-28 | 2023-10-03 | A4660 | 8d |  |  |
| A4820 |  | Cable dressing and tagging | 7d | 2023-10-05 | 2023-10-12 | A4810 SS+10d | 3d | 0d |  |
| A4840 |  | Mid JB and TRD erection | 2d | 2023-10-07 | 2023-10-09 | A4810 | 0d |  |  |
| A4830 |  | loop testing and termination | 5d | 2023-10-10 | 2023-10-14 | A4820 SS+4d | 3d |  |  |
| A4850 |  | CRD cable laying and termination with Mid JB | 3d | 2023-10-10 | 2023-10-12 | A4840 | 0d |  |  |
|  | 4 | **COMMISSIONING** |  | 2023-10-13 | 2023-10-21 |  |  |  |  |
| A4860 |  | Cold Commissioning | 7d | 2023-10-13 | 2023-10-20 | A4850, A4730, A4700, A4720, A4740, A4780, A4790, A4830 SS | 0d |  |  |
| A4870 |  | Hot Commissioning | 0d | 2023-10-21 | 2023-10-21 | A4860 | 0d |  | 2022-11-05 |
| A4880 |  | Ramp up and PG Test | 0d | 2023-10-21 | 2023-10-21 | A4870 | 0d |  | 2022-11-09 |
